# 1200V,140mΩ

Schedule from a web Gantt chart, 2024-07-16 to 2026-03-19.
Every day is a working day

## Schedule

| ID | WBS | Task | Duration | Start | Finish | Predecessors | Complete | Status |
| --- | --- | --- | --- | --- | --- | --- | --- | --- |
| 2 | 1 | Kick off | 6d | 2024-07-16 | 2024-07-21 |  | 100% |  |
| 3 | 2 | Design & Layout | 1d | 2024-07-16 | 2024-07-16 |  | 100% |  |
| 4 | 3 | FT 调试 | 315d | 2024-10-09 | 2025-08-19 |  | 100% |  |
| 5 | 4 | Pre-Qual | 269d | 2024-10-29 | 2025-07-24 |  | 100% |  |
| 6 | 5 | RSA | 159d | 2025-07-25 | 2025-12-30 | 5 |  | waiting |
| 7 | 6 | Fab Process | 31d | 2025-10-20 | 2025-11-19 |  |  |  |
| 8 | 7 | F/O(CP&Map review) | 5d | 2025-11-20 | 2025-11-24 |  |  |  |
| 9 | 8 | PKG & FT | 45d | 2025-11-25 | 2026-01-08 |  |  |  |
| 10 | 9 | **RE验证** | 62d | 2026-01-16 | 2026-03-18 |  |  |  |
| 11 | 9.1 | RE168H | 12d | 2026-01-16 | 2026-01-27 |  |  | waiting |
| 12 | 9.2 | RE504H | 17d | 2026-01-28 | 2026-02-13 |  |  | waiting |
| 13 | 9.3 | RE1008H | 21d | 2026-02-26 | 2026-03-18 |  |  | waiting |
| 14 | 10 | **Datasheet** | 51d | 2026-01-28 | 2026-03-19 |  |  |  |
| 15 | 10.1 | DS V0.5 | 14d | 2026-01-28 | 2026-02-10 | 11 |  | waiting |
| 16 | 10.2 | DS V1.0 | 1d | 2026-03-19 | 2026-03-19 | 13 |  | waiting |
